# Thesis_MasterPlan_v1.1

Schedule from MS Project, 2011-08-09 to 2011-12-28, status date 2011-08-09.
ASUS_F81Se

## Calendars

- Standard: Mon-Fri 08:00-12:00, 13:00-17:00; Sat-Sun off.

## Resources

| Resource |
| --- |
| AllTeam |
| VietHH |
| PhucNN |
| LongDP |

## Schedule

| ID | WBS | Task | Duration | Start | Finish | Predecessors | Total slack | Free slack | Constraint | Resources | Work |
| --- | --- | --- | --- | --- | --- | --- | --- | --- | --- | --- | --- |
| 1 | 1 | **BusInfo** | 101.38d | 2011-08-09 08:00 | 2011-12-28 11:00 |  | 0d |  |  |  | 2204h |
| 2 | 1.1 | **Meeting Minute** | 90.38d | 2011-08-24 08:00 | 2011-12-28 11:00 |  | 0d |  |  | AllTeam; VietHH | 1446h |
| 3 | 1.1.1 | Meeting Minute 1 | 3h | 2011-08-24 08:00 | 2011-08-24 11:00 |  | 90d |  | start no earlier than 2011-08-24 08:00 |  |  |
| 4 | 1.1.2 | Meeting Minute 2 | 3h | 2011-08-31 08:00 | 2011-08-31 11:00 |  | 85d |  | start no earlier than 2011-08-31 08:00 |  |  |
| 5 | 1.1.3 | Meeting Minute 3 | 3h | 2011-09-07 08:00 | 2011-09-07 11:00 |  | 80d |  | start no earlier than 2011-09-07 08:00 |  |  |
| 6 | 1.1.4 | Meeting Minute 4 | 3h | 2011-09-14 08:00 | 2011-09-14 11:00 |  | 75d |  | start no earlier than 2011-09-14 08:00 |  |  |
| 7 | 1.1.5 | Meeting Minute 5 | 3h | 2011-09-21 08:00 | 2011-09-21 11:00 |  | 70d |  | start no earlier than 2011-09-21 08:00 |  |  |
| 8 | 1.1.6 | Meeting Minute 6 | 3h | 2011-09-28 08:00 | 2011-09-28 11:00 |  | 65d |  | start no earlier than 2011-09-28 08:00 |  |  |
| 9 | 1.1.7 | Meeting Minute 7 | 3h | 2011-10-05 08:00 | 2011-10-05 11:00 |  | 60d |  | start no earlier than 2011-10-05 08:00 |  |  |
| 10 | 1.1.8 | Meeting Minute 8 | 3h | 2011-10-12 08:00 | 2011-10-12 11:00 |  | 55d |  | start no earlier than 2011-10-12 08:00 |  |  |
| 11 | 1.1.9 | Meeting Minute 9 | 3h | 2011-10-19 08:00 | 2011-10-19 11:00 |  | 50d |  | start no earlier than 2011-10-19 08:00 |  |  |
| 12 | 1.1.10 | Meeting Minute 10 | 3h | 2011-10-26 08:00 | 2011-10-26 11:00 |  | 45d |  | start no earlier than 2011-10-26 08:00 |  |  |
| 13 | 1.1.11 | Meeting Minute 11 | 3h | 2011-11-02 08:00 | 2011-11-02 11:00 |  | 40d |  | start no earlier than 2011-11-02 08:00 |  |  |
| 14 | 1.1.12 | Meeting Minute 12 | 3h | 2011-11-09 08:00 | 2011-11-09 11:00 |  | 35d |  | start no earlier than 2011-11-09 08:00 |  |  |
| 15 | 1.1.13 | Meeting Minute 13 | 3h | 2011-11-16 08:00 | 2011-11-16 11:00 |  | 30d |  | start no earlier than 2011-11-16 08:00 |  |  |
| 16 | 1.1.14 | Meeting Minute 14 | 3h | 2011-11-23 08:00 | 2011-11-23 11:00 |  | 25d |  | start no earlier than 2011-11-23 08:00 |  |  |
| 17 | 1.1.15 | Meeting Minute 15 | 3h | 2011-11-30 08:00 | 2011-11-30 11:00 |  | 20d |  | start no earlier than 2011-11-30 08:00 |  |  |
| 18 | 1.1.16 | Meeting Minute 16 | 3h | 2011-12-07 08:00 | 2011-12-07 11:00 |  | 15d |  | start no earlier than 2011-12-07 08:00 |  |  |
| 19 | 1.1.17 | Meeting Minute 17 | 3h | 2011-12-14 08:00 | 2011-12-14 11:00 |  | 10d |  | start no earlier than 2011-12-14 08:00 |  |  |
| 20 | 1.1.18 | Meeting Minute 18 | 3h | 2011-12-21 08:00 | 2011-12-21 11:00 |  | 5d |  | start no earlier than 2011-12-21 08:00 |  |  |
| 21 | 1.1.19 | Meeting Minute 19 | 3h | 2011-12-28 08:00 | 2011-12-28 11:00 |  | 0d |  | start no earlier than 2011-12-28 08:00 |  |  |
| 22 | 1.2 | **Analysis / Requirements** | 18d | 2011-08-09 08:00 | 2011-09-01 17:00 |  | 34.88d | 0d |  |  | 94h |
| 23 | 1.2.1 | Write thesis proposal | 12h | 2011-08-09 08:00 | 2011-08-10 12:00 |  | 77.62d | 10.12d | start no earlier than 2011-08-09 08:00 | PhucNN; LongDP | 24h |
| 24 | 1.2.2 | Review + Finalize proposal | 4h | 2011-08-24 13:00 | 2011-08-24 17:00 | 23 | 34.88d | 0d | finish no earlier than 2011-08-24 17:00 | PhucNN; LongDP; VietHH | 12h |
| 25 | 1.2.3 | Finalize requirements | 1d | 2011-08-25 08:00 | 2011-08-25 17:00 | 24 | 32.88d | 0d |  | PhucNN; LongDP; VietHH | 24h |

| ID | WBS | Task | Duration | Start | Finish | Predecessors | Total slack | Free slack | Constraint | Resources | Work |
| --- | --- | --- | --- | --- | --- | --- | --- | --- | --- | --- | --- |
| 26 | 1.2.4 | **Data preprocessing** | 17d | 2011-08-09 08:00 | 2011-08-31 17:00 |  | 34.88d | 0d |  |  | 34h |
| 27 | 1.2.4.1 | Download data from xebuyttphcm.com | 2h | 2011-08-09 08:00 | 2011-08-09 10:00 |  | 47.62d | 12.75d |  | PhucNN | 2h |
| 28 | 1.2.4.2 | Preproces + Analysis | 4d | 2011-08-26 08:00 | 2011-08-31 17:00 | 25, 27 | 34.88d |  | start no earlier than 2011-08-26 08:00 | PhucNN | 32h |
| 29 | 1.2.5 | -- Reserved time -- | 1d | 2011-09-01 08:00 | 2011-09-01 17:00 | 26 | 32.88d |  |  |  |  |
| 30 | 1.3 | **Design** | 8d | 2011-09-02 08:00 | 2011-09-13 17:00 |  | 34.88d | 0d |  |  | 124h |
| 31 | 1.3.1 | **High level Design** | 2d | 2011-09-02 08:00 | 2011-09-05 17:00 | 22 | 34.88d |  |  | PhucNN; LongDP | 64h |
| 32 | 1.3.1.1 | ER | 4h | 2011-09-02 08:00 | 2011-09-02 12:00 |  | 34.88d | 0d |  | PhucNN; LongDP | 8h |
| 33 | 1.3.1.2 | Class Diagram | 6h | 2011-09-02 13:00 | 2011-09-05 10:00 | 32 | 32.88d | 0d |  | LongDP; PhucNN | 12h |
| 34 | 1.3.1.3 | Sequence Diagrams | 6h | 2011-09-05 10:00 | 2011-09-05 17:00 | 33, 32 | 34.88d | 0d |  | PhucNN; LongDP | 12h |
| 35 | 1.3.2 | Design Beta release | 12h | 2011-09-06 08:00 | 2011-09-07 12:00 | 34 | 32.88d | 0d |  | PhucNN; LongDP | 24h |
| 36 | 1.3.3 | Review + Finalize | 12h | 2011-09-07 13:00 | 2011-09-08 17:00 | 35 | 32.88d | 0d | start no earlier than 2011-08-17 08:00 | PhucNN; LongDP; VietHH | 36h |
| 37 | 1.3.4 | -- Reserved time -- | 3d | 2011-09-09 08:00 | 2011-09-13 17:00 | 36 | 32.88d |  |  |  |  |
| 38 | 1.4 | **Development** | 26.5d | 2011-09-14 08:00 | 2011-10-20 12:00 | 30 | 34.88d | 0d |  |  | 344h |
| 39 | 1.4.1 | Identify modular/tiered design parameters | 2h | 2011-09-14 08:00 | 2011-09-14 10:00 |  | 32.88d | 0d | start no earlier than 2011-08-17 08:00 | PhucNN; LongDP | 4h |
| 40 | 1.4.2 | Develop coding plan | 2h | 2011-09-14 10:00 | 2011-09-14 12:00 | 39 | 34.88d | 0d | start no earlier than 2011-08-17 08:00 | PhucNN; LongDP | 4h |
| 41 | 1.4.3 | Develop code + Developer testing (primary debugging) | 4w | 2011-09-14 13:00 | 2011-10-12 12:00 | 40 | 32.88d | 0d | start no earlier than 2011-08-17 08:00 | PhucNN; LongDP | 320h |
| 42 | 1.4.4 | Release | 1d | 2011-10-12 13:00 | 2011-10-13 12:00 | 41 | 32.88d | 0d | start no earlier than 2011-08-17 08:00 | PhucNN; LongDP | 16h |
| 43 | 1.4.5 | -- Reserved time -- | 1w | 2011-10-13 13:00 | 2011-10-20 12:00 | 42 | 32.88d |  |  |  |  |
| 44 | 1.5 | **Testing** | 8d | 2011-10-20 13:00 | 2011-11-01 12:00 | 38 | 34.88d | 0d |  |  | 128h |
| 45 | 1.5.1 | Unit Testing | 1w | 2011-10-20 13:00 | 2011-10-27 12:00 |  | 34.88d | 0d | start no earlier than 2011-08-17 08:00 | PhucNN; LongDP | 80h |
| 46 | 1.5.2 | System test | 3d | 2011-10-27 13:00 | 2011-11-01 12:00 | 45 | 34.88d |  |  | PhucNN; LongDP | 48h |
| 47 | 1.6 | **Documentation** | 4.75d | 2011-11-01 13:00 | 2011-11-08 10:00 |  | 34.88d |  |  |  | 68h |
| 48 | 1.6.1 | Report | 3d | 2011-11-01 13:00 | 2011-11-04 12:00 | 44 | 34.88d | 0d |  | PhucNN; LongDP | 48h |
| 49 | 1.6.2 | Presentation slide | 1d | 2011-11-04 13:00 | 2011-11-07 12:00 | 48 | 36.12d | 0d |  | PhucNN; LongDP | 16h |
| 50 | 1.6.3 | Demo script | 2h | 2011-11-07 13:00 | 2011-11-07 15:00 | 49 | 36.12d | 0d |  | PhucNN; LongDP | 4h |
| 51 | 1.6.4 | -- Reserved time -- | 4h | 2011-11-07 15:00 | 2011-11-08 10:00 | 50 | 36.12d |  |  |  |  |
| 52 | 1.7 | Reserved time | 3d | 2011-11-04 13:00 | 2011-11-09 12:00 | 48 | 34.88d |  |  |  |  |
